# WBS_Zubní_instrumentářka_bez_zdrojů_úprava

Schedule from MS Project, 2025-01-01 to 2025-10-10, costs in Kč.

## Calendars

- Standardní: Mon-Fri 08:00-17:00; Sat-Sun off.
- Kalendář kurzu: Mon-Fri 08:00-24:00; Sat-Sun 08:00-16:00. Exceptions (off unless hours are given): 2025-01-04 to 2025-08-31.
- Kalendář úklid: Mon-Fri 08:00-24:00; Sat-Sun 16:00-20:00.

## Resources

| Resource | Unit | Rate | Cost per use |
| --- | --- | --- | --- |
| Garant projektu/Vrchní stomatolog |  | 650 |  |
| Vrchní sestra/ZI |  | 350 |  |
| Programátor |  | 1200 |  |
| Softwerová aplikace LMS | ks |  | 30000 |
| Stomatolog |  | 500 |  |
| Pronájem vyukových prostor |  |  |  |
| Platba za energie praktická vyuka |  |  | 3000 |
| Platba za energie teoretická vyuka |  |  | 2100 |
| Administrátor projektu |  | 300 |  |
| Didaktické pomůcky | sada | 10000 |  |
| Občerstvení | sada. | 2000 |  |
| Nádobí | sada. | 2000 |  |
| Úklidový pracovník 1 |  | 160 |  |
| Úklidový pracovník 2 |  | 200 |  |

## Schedule

| ID | WBS | Task | Type | Duration | Start | Finish | Predecessors | Total slack | Free slack | Constraint | Calendar | Resources | Work | Cost |
| --- | --- | --- | --- | --- | --- | --- | --- | --- | --- | --- | --- | --- | --- | --- |
| 1 | 1 | **Kurz Zubní instrumentářka** |  | 227.25d | 2025-01-01 12:00 | 2025-10-10 12:00 |  | 0d |  |  |  |  | 250.45h | 187,220 |
| 2 | 1.1 | **Příprava vzdělávacího programu** |  | 227.25d | 2025-01-01 12:00 | 2025-10-10 12:00 |  | 0d |  |  |  | Platba za energie praktická vyuka [10000%]; Pronájem vyukových prostor [10000%]; Platba za energie teoretická vyuka [10000%]; Softwerová aplikace LMS [100 ks] | 250.45h | 187,220 |
| 3 | 1.1.1 | Zpracování osnovy |  | 2h | 2025-01-01 12:00 | 2025-01-01 14:00 |  | 215.62d | 0d |  |  | Garant projektu/Vrchní stomatolog [10%] | 0.2h | 130 |
| 4 | 1.1.2 | Tvorba vyukových materiálů |  | 30h | 2025-01-01 14:00 | 2025-01-06 17:00 | 3 | 215.62d | 0d |  |  | Garant projektu/Vrchní stomatolog [50%] | 15h | 9,750 |
| 5 | 1.1.3 | Příprava pratické vyuky |  | 4h | 2025-01-07 08:00 | 2025-01-07 12:00 | 4 | 215.62d | 0d |  |  | Vrchní sestra/ZI | 4h | 1,400 |
| 6 | 1.1.4 | Příprava cvičných úkolů |  | 1h | 2025-01-07 12:00 | 2025-01-07 13:00 | 5 | 215.62d | 0d |  |  | Vrchní sestra/ZI | 1h | 350 |
| 7 | 1.1.5 | Zpracování e-lerningové formy vyuky a instalace |  | 31h | 2025-01-07 13:00 | 2025-01-10 17:00 | 6 | 215.62d | 0d |  |  | Programátor | 31h | 37,200 |
| 8 | 1.1.6 | Testování e-lerningové formy výuky a kontrola kvality materiálů |  | 25h | 2025-01-13 08:00 | 2025-01-15 15:00 | 7 | 215.62d |  |  |  | Garant projektu/Vrchní stomatolog [40%] | 10h | 6,500 |
| 9 | 1.1.7 | **Pilotní školení** |  | 224.75d | 2025-01-01 12:00 | 2025-10-08 10:00 |  | 0d |  |  |  |  | 169.25h | 90,790 |
| 10 | 1.1.7.1 | Příprava a úprava školících prostor |  | 1h | 2025-01-01 12:00 | 2025-01-01 13:00 |  | 0d |  |  |  | Administrátor projektu [10%] | 0.1h | 30 |
| 11 | 1.1.7.2 | Začátek kurzu | milestone | 0d | 2025-01-01 14:00 | 2025-01-01 14:00 |  | 0d |  | as late as possible |  |  |  |  |
| 12 | 1.1.7.3 | Školení pilotní skupiny –teoretická vyuka |  | 60h | 2025-01-01 14:00 | 2025-09-05 11:00 | 18, 11 | 0d |  |  | Kalendář kurzu | Stomatolog | 60h | 30,000 |
| 13 | 1.1.7.4 | Školení pilotní skupiny – praktická vyuka |  | 80h | 2025-09-05 11:00 | 2025-09-18 10:00 | 12 | 0d |  |  | Kalendář kurzu | Vrchní sestra/ZI | 80h | 28,000 |
| 14 | 1.1.7.5 | Konec vyuky | milestone | 0h | 2025-09-18 10:00 | 2025-09-18 10:00 | 13 | 0d |  |  |  |  |  |  |
| 15 | 1.1.7.6 | Vyhodnocení zpětné vazby od studentů a lektorů |  | 2h | 2025-10-08 08:00 | 2025-10-08 10:00 | 26 | 0d |  |  |  | Administrátor projektu | 2h | 600 |
| 16 | 1.1.7.7 | Příprava didaktických a vyukových pomůcek |  | 0.5h | 2025-01-01 14:00 | 2025-01-01 14:30 | 17 | 224.44d |  |  |  | Vrchní sestra/ZI | 0.5h | 175 |
| 17 | 1.1.7.8 | Nákup didaktických pomůcek |  | 1h | 2025-01-01 13:00 | 2025-01-01 14:00 | 10 | 224.44d | 0d |  |  | Administrátor projektu [10%]; Didaktické pomůcky [2 sada] | 0.1h | 20,030 |
| 18 | 1.1.7.9 | Proškolení lektorů garantem projektu |  | 2h | 2025-01-01 12:00 | 2025-01-01 14:00 | 10SS | 0d |  |  |  | Garant projektu/Vrchní stomatolog [10%] | 0.2h | 130 |
| 19 | 1.1.7.10 | Příprava občerstvení |  | 1.5h | 2025-01-01 13:00 | 2025-01-01 14:30 | 20, 21 | 224.44d |  |  |  | Administrátor projektu [10%] | 0.15h | 45 |
| 20 | 1.1.7.11 | Nákup občerstvení |  | 1h | 2025-01-01 12:00 | 2025-01-01 13:00 |  | 224.44d | 0d |  |  | Administrátor projektu [10%]; Občerstvení [1 sada.] | 0.1h | 2,030 |
| 21 | 1.1.7.12 | Nákup nádobí pro kurz |  | 1h | 2025-01-01 12:00 | 2025-01-01 13:00 | 20SS | 224.44d | 0d |  |  | Administrátor projektu [10%]; Nádobí [1 sada.] | 0.1h | 2,030 |
| 22 | 1.1.7.13 | Úklid vyukové místnosti |  | 6h | 2025-09-05 11:00 | 2025-09-05 17:00 | 12 | 49.25d |  |  | Kalendář úklid | Úklidový pracovník 1 | 6h | 960 |
| 23 | 1.1.7.14 | Úklid ordinace |  | 8h | 2025-09-18 10:00 | 2025-09-19 09:00 | 13 | 29.12d |  |  | Kalendář úklid | Úklidový pracovník 2 | 8h | 1,600 |
| 24 | 1.1.7.15 | Příprava studentů na zkoušku | milestone | 14d | 2025-09-18 10:00 | 2025-10-06 14:00 | 14 | 0d |  | as late as possible |  |  |  |  |
| 25 | 1.1.7.16 | Ústní závěrečná zkouška |  | 6h | 2025-10-06 14:00 | 2025-10-07 11:00 | 24 | 0d |  |  | Kalendář kurzu | Administrátor projektu [20%]; Garant projektu/Vrchní stomatolog [40%]; Stomatolog [40%] | 6h | 3,120 |
| 26 | 1.1.7.17 | Praktická závěrečná zkouška |  | 6h | 2025-10-07 11:00 | 2025-10-07 17:00 | 25 | 0d |  |  | Kalendář kurzu | Administrátor projektu [20%]; Vrchní sestra/ZI [80%] | 6h | 2,040 |

| ID | WBS | Task | Duration | Start | Finish | Predecessors | Total slack | Resources | Work | Cost |
| --- | --- | --- | --- | --- | --- | --- | --- | --- | --- | --- |
| 27 | 1.1.8 | **Dopracování vzdělávacího programu** | 2.5d | 2025-10-08 10:00 | 2025-10-10 12:00 | 9 | 0d |  | 20h | 6,000 |
| 28 | 1.1.8.1 | Zapracování výstupů zpilotního vzdělávání do finální verze | 10h | 2025-10-08 10:00 | 2025-10-09 11:00 | 22 | 0d | Administrátor projektu | 10h | 3,000 |
| 29 | 1.1.8.2 | Tisk finálních vyukových materiálů, vznik elektronické verze | 5h | 2025-10-09 11:00 | 2025-10-09 16:00 | 28 | 0d | Administrátor projektu | 5h | 1,500 |
| 30 | 1.1.8.3 | Příprava vzdělávacího programu kakreditaci (žádost o akreditaci) | 5h | 2025-10-09 16:00 | 2025-10-10 12:00 | 29 | 0d | Administrátor projektu | 5h | 1,500 |
